# quản lý xây nhà và chăm sóc thú cưng

Schedule from MS Project, 2024-04-15 to 2024-09-20, status date 2024-03-31, costs in ₫, A marks actual dates.

## Calendars

- Xây nhà và chăm sóc thú cưng: Mon-Sun 08:00-12:00, 13:00-17:00.

## Resources

| Resource | Group | Unit | Rate | Notes |
| --- | --- | --- | --- | --- |
| Nhân công | Con người |  | 35000 |  |
| Nhân viên | Con người |  | 25000 |  |
| Bác sĩ thú y | Con người |  | 31250 |  |
| Bản thiết kế nhà |  |  | 20000000 |  |
| Gạch | Vật liệu xd | viên | 1000 |  |
| Thép sắt | Vật liệu xd | tấn | 15000000 |  |
| Xi năng | Vật liệu xd | tấn | 970000 |  |
| Cát | Vật liệu xd | khối | 250000 |  |
| Sỏi | Vật liệu xd | khối |  |  |
| Ép cọc |  |  |  |  |
| Ngói nhà | Vật liệu xd | viên | 15000 | 330 viên |
| Sơn | Vật liệu xd | thùng | 1450000 | 7 thùng |
| Cửa sổ | Đồ gia dụng | m2 | 320000 |  |
| Cửa nhà kính | Đồ gia dụng | m2 | 350000 | 40 m2 |
| Nhân công điện nước | Con người |  | 75000 |  |
| Đồ trang trí | Đồ gia dụng |  | 5000000 |  |
| Điều hòa | Đồ gia dụng | chiếc | 10000000 | 4 chiếc |
| Quạt | Đồ gia dụng | chiếc | 1340000 | 3 chiếc |
| Máy thông gió | Đồ gia dụng | chiếc | 2000000 | 1 cái |
| Máy sưởi | Đồ gia dụng | chiếc | 990000 | 2 cái |
| Máy đo nhiệt độ phòng | Đồ gia dụng | chiếc | 500000 | 1 cái |
| Máy sấy | Đồ gia dụng | chiếc | 100000 | 4 cái |
| Máy tỉa lông | Đồ gia dụng | chiếc | 1350000 | 2 cái |
| Nệm | Đồ gia dụng | chiếc | 115000 | 10 cái |
| Bát | Đồ gia dụng | chiếc | 35000 | 10 cái |
| Máy lọc nước | Đồ gia dụng | chiếc | 3000000 | 1 cái |
| Bồn tắm | Đồ gia dụng | chiếc | 650000 | 3 cái |
| Khăn tắm | Đồ gia dụng | chiếc | 5000 | 30 cái |
| Bàn ghế | Đồ gia dụng |  | 2500000 | 2 bộ: 2 bàn 10 ghế gập |
| Thức ăn | Đồ gia dụng | gói | 200000 | 20 gói |
| Cân | Đồ gia dụng | chiếc | 650000 | 1 chiếc |
| Thuốc thú y | Đồ gia dụng | hòm | 3000000 |  |
| Sữa tắm | Đồ gia dụng | chiếc | 150000 | 10 |
| Biển hiệu | Đồ gia dụng | Chiếc | 1300000 |  |
| Quảng cáo | Đồ gia dụng | ngày | 100000 |  |
| Đồ chơi | Đồ gia dụng | thùng | 500000 |  |
| Máy hút bụi | Đồ gia dụng | chiếc | 5000000 | 1 cái |
| Giấy phép |  |  | 20000000 |  |

## Schedule

| ID | WBS | Task | Duration | Start | Finish | Predecessors | Complete | Remaining | Baseline start | Baseline finish | Baseline duration | Baseline 1 start | Baseline 1 finish | Total slack | Free slack | Resources | Work | Actual work | Cost | Baseline cost | Actual cost | Text3 | Variance | Text2 |
| --- | --- | --- | --- | --- | --- | --- | --- | --- | --- | --- | --- | --- | --- | --- | --- | --- | --- | --- | --- | --- | --- | --- | --- | --- |
| 1 | 1 | **CHUẨN BỊ DỰ ÁN** | 10.25d? | 2024-04-15 A | 2024-04-25 |  | 11% | 9.07d? | 2024-04-15 | 2024-04-25 | 10.25d? | 2024-04-15 | 2024-04-25 | 148.75d |  |  | 10h | 4h | 62,000,000 | 62,000,000 | 23,000,000 | CHUẨN BỊ DỰ ÁN |  |  |
| 2 | 1.1 | Chuẩn bị mặt bằng | 1d | 2024-04-15 A | 2024-04-15 A |  | 100% |  | 2024-04-15 | 2024-04-15 | 1d | 2024-04-15 | 2024-04-15 |  |  |  |  |  |  |  |  | Chuẩn bị mặt bằng |  |  |
| 3 | 1.2 | Chuẩn bị giấy phép | 5d | 2024-04-16 A | 2024-04-20 | 2 | 5% | 4.75d | 2024-04-16 | 2024-04-20 | 5d | 2024-04-16 | 2024-04-20 | 153d |  | Giấy phép |  |  | 19,000,000 | 19,000,000 |  | Chuẩn bị mặt bằng | -19000000 |  |
| 4 | 1.3 | Tìm và chọn nhà thầu xây nhà | 1.25d | 2024-04-16 A | 2024-04-17 | 2 | 40% | 0.75d | 2024-04-16 | 2024-04-17 | 1.25d | 2024-04-16 | 2024-04-17 | 68.75d | 0d |  | 10h | 4h |  |  |  | Chuẩn bị mặt bằng |  |  |
| 5 | 1.4 | Chuẩn bị bản thiết kế | 7d | 2024-04-17 A | 2024-04-24 | 4 |  | 7d | 2024-04-17 | 2024-04-24 | 7d | 2024-04-17 | 2024-04-24 | 68.75d | 0d | Bản thiết kế nhà |  |  | 43,000,000 | 43,000,000 | 23,000,000 | Chuẩn bị mặt bằng | -20000000 | -2000000 |
| 6 | 1.5 | Chuẩn bị vật liệu | 1d? | 2024-04-24 | 2024-04-25 | 5 |  |  | 2024-04-24 | 2024-04-25 | 1d? | 2024-04-24 | 2024-04-25 | 68.75d | 0d |  |  |  |  |  |  | Chuẩn bị giấy phép |  | -1 |
| 7 | 2 | **TIẾN ĐỘ XÂY NHÀ** | 92d? | 2024-04-25 A | 2024-07-26 |  | 18% | 75.79d? | 2024-04-25 | 2024-07-26 | 92d? | 2024-04-25 | 2024-07-26 | 56.75d |  |  | 6136h | 672h | 727,721,079.57 | 727,721,079.57 | 349,069,951 | Chuẩn bị giấy phép |  |  |
| 8 | 2.1 | **PHẦN VIỆC XÂY DỰNG** | 76d | 2024-04-25 A | 2024-07-10 |  | 10% | 68.31d | 2024-04-25 | 2024-07-10 | 76d | 2024-04-25 | 2024-07-10 | 72.75d |  |  | 5880h | 528h | 659,701,077.57 | 659,701,077.57 | 315,829,949 | Tìm và chọn nhà thầu xây nhà |  |  |
| 9 | 2.1.1 | Ép cọc | 1d | 2024-04-25 A | 2024-04-30 | 6 | 40% | 0.6d | 2024-04-25 | 2024-04-30 | 1d | 2024-04-25 | 2024-04-30 | 64.35d | 0d | Ép cọc [0.1%]; Nhân công [500%] | 40h | 16h | 4,340,000 | 4,340,000 | 2,300,000 | Tìm và chọn nhà thầu xây nhà | -2040000 | -2300000 |
| 10 | 2.1.2 | Đào móng cột ,phá đầu cọc | 5d | 2024-04-30 A | 2024-05-07 | 9 | 7% | 4.65d | 2024-04-30 | 2024-05-07 | 5d | 2024-04-30 | 2024-05-07 | 62d | 0d | Nhân công [2000%] | 800h | 56h | 56,040,000 | 56,040,000 | 30,000,000 | Tìm và chọn nhà thầu xây nhà | -26040000 |  |
| 11 | 2.1.3 | Đan thép | 5d | 2024-04-30 A | 2024-05-07 | 9 | 5% | 4.75d | 2024-04-30 | 2024-05-07 | 5d | 2024-04-30 | 2024-05-07 | 136.75d |  | Thép sắt [5 tấn]; Nhân công [2000%] | 800h | 40h | 177,850,000 | 177,850,000 | 80,000,000 | Tìm và chọn nhà thầu xây nhà | -97850000 |  |
| 12 | 2.1.4 | Ván khuôn ( coffa) | 7d | 2024-04-30 A | 2024-05-09 | 9 | 5% | 6.67d | 2024-04-30 | 2024-05-09 | 7d | 2024-04-30 | 2024-05-09 | 134.75d |  | Nhân công [1500%]; Thép sắt [2 tấn] | 840h | 40h | 106,066,377.57 | 106,066,377.57 | 49,494,949 | Chuẩn bị bản thiết kế | -56571428.57 |  |
| 13 | 2.1.5 | Đổ móng | 5d | 2024-05-07 A | 2024-05-14 | 10 | 5% | 4.75d | 2024-05-07 | 2024-05-14 | 5d | 2024-05-07 | 2024-05-14 | 59.75d | 0d | Nhân công [2000%] | 800h | 40h | 56,700,000 | 56,700,000 | 30,100,000 | Chuẩn bị bản thiết kế | -26600000 |  |
| 14 | 2.1.6 | Đổ bê tông cột | 5d | 2024-05-14 A | 2024-05-21 | 13 | 6% | 4.7d | 2024-05-14 | 2024-05-21 | 5d | 2024-05-14 | 2024-05-21 | 58.85d | 0d | Nhân công [2000%]; Sỏi [2 khối]; Xi năng [0.5 tấn] | 800h | 48h | 55,566,200 | 55,566,200 | 28,800,000 | Chuẩn bị vật liệu | -26766200 |  |
| 15 | 2.1.7 | San cát | 10d | 2024-05-21 A | 2024-06-04 | 14 | 24% | 7.6d | 2024-05-21 | 2024-06-04 | 10d | 2024-05-21 | 2024-06-04 | 52.45d | 0d | Nhân công [500%] | 400h | 96h | 20,630,000 | 20,630,000 | 9,990,000 | Chuẩn bị vật liệu | -10640000 |  |
| 16 | 2.1.8 | Xây tường nhà | 15d | 2024-06-04 | 2024-06-19 | 15 |  |  | 2024-06-04 | 2024-06-19 | 15d | 2024-06-04 | 2024-06-19 | 52.45d | 0d | Gạch [50000 viên] |  |  | 90,000,000 | 90,000,000 | 40,000,000 | Chuẩn bị vật liệu | -50000000 |  |
| 17 | 2.1.9 | Làm mái | 10d | 2024-06-19 A | 2024-07-03 | 16 | 12% | 8.8d | 2024-06-19 | 2024-07-03 | 10d | 2024-06-19 | 2024-07-03 | 47.25d | 0d | Ngói nhà [330 viên]; Nhân công [1000%] | 800h | 96h | 58,992,000 | 58,992,000 | 29,996,000 | TIẾN ĐỘ XÂY NHÀ | -28996000 |  |
| 18 | 2.1.10 | Chát tường nhà | 5d | 2024-06-19 A | 2024-06-26 | 16 | 28% | 3.6d | 2024-06-19 | 2024-06-26 | 5d | 2024-06-19 | 2024-06-26 | 54.25d | 0d | Nhân công [500%]; Xi năng [0.5 tấn] | 200h | 56h | 10,680,000 | 10,680,000 | 5,349,000 | PHẦN VIỆC XÂY DỰNG | -5331000 |  |
| 19 | 2.1.11 | Làm sàn nhà | 5d | 2024-07-03 A | 2024-07-10 | 17, 18 | 10% | 4.5d | 2024-07-03 | 2024-07-10 | 5d | 2024-07-03 | 2024-07-10 | 44.75d | 0d | Nhân công [1000%]; Xi năng [0.5 tấn] | 400h | 40h | 22,836,500 | 22,836,500 | 9,800,000 | Ép cọc | -13036500 |  |
| 20 | 2.2 | **PHẦN VIỆC HOÀN THIỆN** | 30d? | 2024-06-26 A | 2024-07-26 |  | 45% | 16.5d? | 2024-06-26 | 2024-07-26 | 30d? | 2024-06-26 | 2024-07-26 | 36.75d | 28.75d |  | 256h | 144h | 68,020,002 | 68,020,002 | 33,240,002 | Ép cọc |  |  |
| 21 | 2.2.1 | Sơn tường | 7d | 2024-06-26 A | 2024-07-05 | 18 | 57% | 3d | 2024-06-26 | 2024-07-05 | 7d | 2024-06-26 | 2024-07-05 | 56.75d |  | Sơn [7 thùng]; Nhân công [200%] | 112h | 64h | 7,738,000 | 7,738,000 | 3,158,000 | Ép cọc | -4580000 |  |
| 22 | 2.2.2 | Làm rãnh thoát nước | 4d | 2024-07-10 A | 2024-07-16 | 19 | 63% | 1.5d | 2024-07-10 | 2024-07-16 | 4d | 2024-07-10 | 2024-07-16 | 41.25d | 0d | Nhân công điện nước [200%] | 64h | 40h | 3,382,002 | 3,382,002 | 1,582,002 | Ép cọc | -1800000 |  |
| 23 | 2.2.3 | Lắp đặt điện nước | 5d | 2024-07-16 A | 2024-07-23 | 22 | 50% | 2.5d | 2024-07-16 | 2024-07-23 | 5d | 2024-07-16 | 2024-07-23 | 36.75d | 0d | Nhân công điện nước [200%] | 80h | 40h | 6,000,000 | 6,000,000 | 3,000,000 | Đào móng cột ,phá đầu cọc | -3000000 |  |
| 24 | 2.2.4 | Lắp cửa , cửa sổ | 2d | 2024-07-23 | 2024-07-25 | 23 |  |  | 2024-07-23 | 2024-07-25 | 2d | 2024-07-23 | 2024-07-25 | 36.75d | 0d | Cửa nhà kính [40 m2]; Cửa sổ [20 m2] |  |  | 39,400,000 | 39,400,000 | 19,000,000 | Đào móng cột ,phá đầu cọc | -20400000 |  |
| 25 | 2.2.5 | Trang trí | 1d? | 2024-07-25 | 2024-07-26 | 24 |  |  | 2024-07-25 | 2024-07-26 | 1d? | 2024-07-25 | 2024-07-26 | 36.75d | 0d | Đồ trang trí |  |  | 11,500,000 | 11,500,000 | 6,500,000 | Đào móng cột ,phá đầu cọc | -5000000 |  |

| ID | WBS | Task | Duration | Start | Finish | Predecessors | Complete | Remaining | Baseline start | Baseline finish | Baseline duration | Baseline 1 start | Baseline 1 finish | Total slack | Free slack | Resources | Work | Actual work | Cost | Baseline cost | Actual cost | Text3 | Variance |
| --- | --- | --- | --- | --- | --- | --- | --- | --- | --- | --- | --- | --- | --- | --- | --- | --- | --- | --- | --- | --- | --- | --- | --- |
| 27 | 3 | **TIẾN ĐỘ CHĂM SÓC THÚ CƯNG** | 120d | 2024-04-20 A | 2024-08-17 |  | 65% | 42d | 2024-04-20 | 2024-08-17 | 120d | 2024-04-20 | 2024-08-17 | 34d |  |  | 232h | 224h | 139,230,000 | 139,230,000 | 75,600,000 | Đan thép |  |
| 28 | 3.1 | **PHẦN VIỆC CHUẨN BỊ KHÔNG GIAN SỐNG** | 107.25d | 2024-04-20 A | 2024-08-05 |  | 46% | 57.75d | 2024-04-20 | 2024-08-05 | 107.25d | 2024-04-20 | 2024-08-05 | 39.75d |  |  | 48h | 48h | 93,950,000 | 93,950,000 | 50,500,000 | Đan thép |  |
| 29 | 3.1.1 | Mua sắm đồ dùng cần thiết như nệm , chén bát,đồ chơi ... | 3d | 2024-04-20 A | 2024-07-29 | 25 |  | 3d | 2024-04-20 | 2024-07-29 | 3d | 2024-04-20 | 2024-07-29 | 42.75d | 3d | Nệm [10 chiếc]; Khăn tắm [30 chiếc]; Cân [1 chiếc]; Sữa tắm [10 chiếc]; Điều hòa [4 chiếc] |  |  | 93,950,000 | 93,950,000 | 50,500,000 | Đan thép | -43450000 |
| 30 | 3.1.2 | Chuẩn bị không gian sống | 3d | 2024-07-26 A | 2024-07-29 A | 25 | 100% |  | 2024-07-26 | 2024-07-29 | 3d | 2024-07-26 | 2024-07-29 |  |  |  | 24h | 24h |  |  |  | Đan thép |  |
| 31 | 3.1.3 | Làm sạch không gian sống | 3d | 2024-07-29 A | 2024-08-01 A | 30 | 100% |  | 2024-07-29 | 2024-08-01 | 3d | 2024-07-29 | 2024-08-01 |  |  | Nhân viên | 24h | 24h |  |  |  | Đan thép |  |
| 32 | 3.1.4 | Sắp xếp đồ đạc | 4d | 2024-08-01 | 2024-08-05 | 30, 29, 31 |  |  | 2024-08-01 | 2024-08-05 | 4d | 2024-08-01 | 2024-08-05 | 39.75d | 0d |  |  |  |  |  |  | Đan thép |  |
| 33 | 3.2 | **PHẦN VIỆC CHĂM SÓC** | 22.75d | 2024-07-26 A | 2024-08-17 |  | 74% | 5.9d | 2024-07-26 | 2024-08-17 | 22.75d | 2024-07-26 | 2024-08-17 | 34d |  |  | 184h | 176h | 45,280,000 | 45,280,000 | 25,100,000 | Ván khuôn ( coffa) |  |
| 34 | 3.2.1 | Mua sắm các thiết bị chăm sóc : Máy theo dõi thú cưng , bàn cắt tỉa lông ,máy sấy … | 5d | 2024-08-05 | 2024-08-10 | 32 |  |  | 2024-08-05 | 2024-08-10 | 5d | 2024-08-05 | 2024-08-10 | 39.75d | 1.75d | Máy thông gió [1 chiếc]; Máy sưởi [2 chiếc]; Máy hút bụi [1 chiếc]; Máy đo nhiệt độ phòng [1 chiếc]; Máy sấy [4 chiếc]; Máy tỉa lông [2 chiếc]; Máy lọc nước [1 chiếc] |  |  | 35,580,000 | 35,580,000 | 20,000,000 | Đổ móng | -15580000 |
| 35 | 3.2.2 | Lắp đặt thiết bị chăm sóc thú cưng | 4d | 2024-08-12 A | 2024-08-15 | 34 | 75% | 1d | 2024-08-12 | 2024-08-15 | 4d | 2024-08-12 | 2024-08-15 | 35d | 0d | Nhân công điện nước | 32h | 24h | 1,200,000 | 1,200,000 | 600,000 | Đổ móng | -600000 |
| 36 | 3.2.3 | Tìm hiểu các phương pháp chăm sóc thú cưng | 15d | 2024-07-26 A | 2024-08-10 A | 25 | 100% |  | 2024-07-26 | 2024-08-10 | 15d | 2024-07-26 | 2024-08-10 |  |  |  | 136h | 136h |  |  |  | Đổ móng |  |
| 37 | 3.2.4 | Tìm nguồn mua thức ăn uy tín | 2d | 2024-08-16 A | 2024-08-17 A | 34, 35 | 100% |  | 2024-08-16 | 2024-08-17 | 2d | 2024-08-16 | 2024-08-17 |  |  |  | 16h | 16h |  |  |  | Đổ móng |  |
| 38 | 3.2.5 | Chọn thức ăn | 1d | 2024-08-16 | 2024-08-16 | 34, 35 |  |  | 2024-08-16 | 2024-08-16 | 1d | 2024-08-16 | 2024-08-16 | 35d |  | Thức ăn [20 gói] |  |  | 8,500,000 | 8,500,000 | 4,500,000 | Đổ móng | -4000000 |
| 39 | 4 | **DI CHUYỂN VÀ ĐIỀU CHỈNH** | 8d | 2024-08-16 A | 2024-08-23 A |  | 100% |  | 2024-08-16 | 2024-08-23 | 8d | 2024-08-16 | 2024-08-23 |  |  |  | 72h | 72h |  |  |  | Đổ bê tông cột |  |
| 40 | 4.1 | Di chuyển thú cưng về nhà mới | 1d | 2024-08-16 A | 2024-08-16 A | 32, 35 | 100% |  | 2024-08-16 | 2024-08-16 | 1d | 2024-08-16 | 2024-08-16 |  |  |  | 8h | 8h |  |  |  | San cát |  |
| 41 | 4.2 | Di chuyển máy móc thiết bị | 1d | 2024-08-16 A | 2024-08-16 A | 32, 35 | 100% |  | 2024-08-16 | 2024-08-16 | 1d | 2024-08-16 | 2024-08-16 |  |  |  | 8h | 8h |  |  |  | Xây tường nhà |  |
| 42 | 4.3 | Giám sát phản ứng và thích nghi của thú cưng | 7d | 2024-08-17 A | 2024-08-23 A | 40, 41 | 100% |  | 2024-08-17 | 2024-08-23 | 7d | 2024-08-17 | 2024-08-23 |  |  |  | 56h | 56h |  |  |  | Xây tường nhà |  |
| 43 | 5 | **CHUẨN BỊ KHAI TRƯƠNG** | 20d | 2024-08-24 A | 2024-09-12 | 42 | 36% | 12.73d | 2024-08-24 | 2024-09-12 | 20d | 2024-08-23 | 2024-09-12 | 8d |  |  | 128h | 120h | 4,700,000 | 4,700,000 | 2,000,000 | Xây tường nhà |  |
| 44 | 5.1 | Làm biển hiệu | 6d | 2024-08-24 | 2024-08-29 | 20 |  |  | 2024-08-24 | 2024-08-29 | 6d | 2024-08-24 | 2024-08-29 | 8d | 0d | Biển hiệu [1 Chiếc] |  |  | 2,300,000 | 2,300,000 | 1,000,000 | Xây tường nhà | -1300000 |
| 45 | 5.2 | Chạy quảng cáo | 14d | 2024-08-30 | 2024-09-12 | 44 |  |  | 2024-08-30 | 2024-09-12 | 14d | 2024-08-30 | 2024-09-12 | 8d | 0d | Quảng cáo [14 ngày] |  |  | 2,400,000 | 2,400,000 | 1,000,000 | Xây tường nhà | -1400000 |
| 46 | 5.3 | Lập website riêng cho cửa hàng | 4d | 2024-08-30 A | 2024-09-02 | 45SS | 75% | 1d | 2024-08-30 | 2024-09-02 | 4d | 2024-08-30 | 2024-09-02 | 18d |  |  | 40h | 32h |  |  |  | Làm mái |  |
| 47 | 5.4 | Lên danh sách khác mời | 2d | 2024-08-30 A | 2024-08-31 A | 44 | 100% |  | 2024-08-30 | 2024-08-31 | 2d | 2024-08-30 | 2024-08-31 |  |  |  | 16h | 16h |  |  |  | Làm mái |  |
| 48 | 5.5 | Thuê nhân viên | 7d | 2024-08-30 A | 2024-09-09 A | 44 | 100% |  | 2024-08-30 | 2024-09-09 | 7d | 2024-08-30 | 2024-09-05 |  |  | Nhân viên [500%] | 72h | 72h |  |  |  | Làm mái |  |
| 49 | 6 | **QUẢN LÝ BẢO TRÌ** | 11d | 2024-09-10 | 2024-09-20 |  |  |  | 2024-09-10 | 2024-09-20 | 11d | 2024-09-06 | 2024-09-16 | 0d |  |  | 152h |  | 14,250,000 | 14,250,000 | 8,000,000 | Chát tường nhà |  |
| 50 | 6.1 | Hoạt động bảo trì | 5d | 2024-09-10 | 2024-09-16 | 48 |  |  | 2024-09-10 | 2024-09-16 | 5d | 2024-09-06 | 2024-09-10 | 4d |  | Nhân công điện nước; Nhân viên [200%] | 80h |  | 9,000,000 | 9,000,000 | 5,000,000 | Chát tường nhà | -4000000 |
| 51 | 6.2 | Vệ sinh định kỳ cho thú cưng | 10d | 2024-09-10 | 2024-09-20 | 48 |  |  | 2024-09-10 | 2024-09-20 | 10d | 2024-09-06 | 2024-09-16 | 0d |  |  |  |  |  |  |  | Chát tường nhà |  |
| 52 | 6.3 | Vệ sinh định kỳ cho không gian sống của thú cưng | 1d | 2024-09-10 | 2024-09-10 | 48 |  |  | 2024-09-10 | 2024-09-10 | 1d | 2024-09-06 | 2024-09-06 | 10d |  |  |  |  |  |  |  | Làm sàn nhà |  |
| 53 | 6.4 | Theo dõi sức khỏe | 7d | 2024-09-10 | 2024-09-18 | 48 |  |  | 2024-09-10 | 2024-09-18 | 7d | 2024-09-06 | 2024-09-12 | 2d |  | Bác sĩ thú y | 56h |  | 4,250,000 | 4,250,000 | 2,500,000 | Làm sàn nhà | -1750000 |
| 54 | 6.5 | Chăm sóc y tế | 2d | 2024-09-10 | 2024-09-11 | 48 |  |  | 2024-09-10 | 2024-09-11 | 2d | 2024-09-06 | 2024-09-07 | 9d |  | Bác sĩ thú y | 16h |  | 1,000,000 | 1,000,000 | 500,000 | PHẦN VIỆC HOÀN THIỆN | -500000 |
